# Nuevo Gantt Glow Girl

Schedule from MS Project, 2026-07-21 to 2027-04-06, costs in $, A marks actual dates.

## Calendars

- Estándar: Mon-Fri 09:00-13:00, 15:00-19:00; Sat-Sun off. Exceptions (off unless hours are given): 2026-08-15 09:00-13:00, 15:00-19:00, 2026-09-20 09:00-13:00, 15:00-19:00.

## Resources

| Resource | Rate |
| --- | --- |
| PROJECT MANAGER | 34588 |
| Coordinador del proyecto | 25941 |
| Analista 1 | 16141 |
| Analista 2 | 16141 |
| Arquitecto 1 | 19023 |
| Arquitecto 2 | 19023 |
| Desarrollador Backend | 23058 |
| Desarrollador Frontend | 18447 |
| Tester | 20176 |

## Schedule

| ID | WBS | Task | Duration | Start | Finish | Predecessors | Complete | Remaining | Total slack | Free slack | Constraint | Resources | Work | Actual work | Cost | Actual cost |
| --- | --- | --- | --- | --- | --- | --- | --- | --- | --- | --- | --- | --- | --- | --- | --- | --- |
| 1 | 1 | **ANÁLISIS** | 23d | 2026-07-21 A | 2026-08-19 A |  | 100% |  |  |  |  | PROJECT MANAGER | 360h | 360h | 10,600,064 | 10,600,064 |
| 2 | 1.1 | Entrevista con el cliente | 2d | 2026-07-21 A | 2026-07-22 A |  | 100% |  |  |  | finish no earlier than 2026-07-22 | PROJECT MANAGER | 16h | 16h | 553,408 | 553,408 |
| 3 | 1.2 | Recolección de información | 5d | 2026-07-23 A | 2026-07-29 A | 2 | 100% |  |  |  | finish no earlier than 2026-07-29 | Coordinador del proyecto [50%]; Analista 1 [50%] | 40h | 40h | 841,640 | 841,640 |
| 4 | 1.3 | Análisis de la información | 4d | 2026-07-30 A | 2026-08-04 A | 3 | 100% |  |  |  | finish no earlier than 2026-08-04 | Analista 1 | 32h | 32h | 516,512 | 516,512 |
| 5 | 1.4 | Definición de objetivos del proyecto | 4d | 2026-08-05 A | 2026-08-10 A | 4 | 100% |  |  |  | finish no earlier than 2026-08-10 | PROJECT MANAGER | 32h | 32h | 1,106,816 | 1,106,816 |
| 6 | 1.5 | Identificación y análisis del problema | 3d | 2026-08-11 A | 2026-08-13 A | 5 | 100% |  |  |  | finish no earlier than 2026-08-13 | Coordinador del proyecto | 24h | 24h | 622,584 | 622,584 |
| 7 | 1.6 | Definición del alcance | 2d | 2026-08-15 A | 2026-08-17 A | 6 | 100% |  |  |  | finish no earlier than 2026-08-17 | Analista 1 | 16h | 16h | 258,256 | 258,256 |
| 8 | 1.7 | Requerimientos funcionales | 1d | 2026-08-18 A | 2026-08-18 A | 7 | 100% |  |  |  | start no earlier than 2026-08-18 | Coordinador del proyecto | 8h | 8h | 207,528 | 207,528 |
| 9 | 1.8 | Requerimientos no funcionales | 1d | 2026-08-19 A | 2026-08-19 A | 8 | 100% |  |  |  | start no earlier than 2026-08-19 | Analista 1 | 8h | 8h | 129,128 | 129,128 |
| 10 | 2 | **DISEÑO** | 24d | 2026-08-20 A | 2026-09-21 |  | 96% | 1d | 121d |  |  | PROJECT MANAGER | 384h | 346.19h | 10,297,952 | 9,114,757.37 |
| 11 | 2.1 | Diseño de arquitectura del sistema | 4d | 2026-08-20 A | 2026-08-25 A | 9 | 100% |  |  |  | start no earlier than 2026-08-20 | Analista 2 | 32h | 32h | 516,512 | 516,512 |
| 12 | 2.2 | Diagrama de casos de uso | 3d | 2026-08-26 A | 2026-08-28 A | 11 | 100% |  |  |  | finish no earlier than 2026-08-28 | Coordinador del proyecto | 24h | 24h | 622,584 | 622,584 |
| 13 | 2.3 | Diagrama de clases | 3d | 2026-08-31 A | 2026-09-02 A | 12 | 100% |  |  |  | finish no earlier than 2026-09-02 | Analista 1 | 24h | 24h | 387,384 | 387,384 |
| 14 | 2.4 | Diagrama de componentes | 2d | 2026-09-03 A | 2026-09-04 A | 13 | 100% |  |  |  | finish no earlier than 2026-09-04 | Arquitecto 1 | 16h | 16h | 304,368 | 304,368 |
| 15 | 2.5 | Diagrama de despliegue | 2d | 2026-09-07 A | 2026-09-08 A | 14 | 100% |  |  |  | finish no earlier than 2026-09-08 | Arquitecto 1 | 16h | 16h | 304,368 | 304,368 |
| 16 | 2.6 | Diseño de base de datos | 4d | 2026-09-09 A | 2026-09-14 A | 15 | 100% |  |  |  | finish no earlier than 2026-09-14 | Arquitecto 1 | 32h | 32h | 608,736 | 608,736 |
| 17 | 2.7 | Diseño de interfaces / prototipo | 6d | 2026-09-15 A | 2026-09-21 | 16 | 83% | 1d | 121d | 99d | finish no earlier than 2026-09-21 | Arquitecto 2 | 48h | 40h | 913,104 | 760,920 |
| 18 | 3 | **DESARROLLO** | 99d | 2026-09-22 A | 2027-02-05 |  | 14% | 85.39d |  |  |  | PROJECT MANAGER | 1261.6h | 169.34h | 27,738,294.53 | 4,027,270.41 |
| 19 | 3.1 | Configuración del entorno | 1d | 2026-09-22 A | 2026-09-22 A | 17 | 100% |  |  |  |  | Desarrollador Backend; Desarrollador Frontend | 16h | 16h | 332,040 | 332,040 |
| 20 | 3.2 | Desarrollo de base de datos | 70d | 2026-09-23 A | 2026-12-29 | 19 | 3% | 68d | 70d |  | finish no earlier than 2026-10-07 | Desarrollador Backend [10%] | 57.6h | 3.2h | 1,328,140.8 | 73,785.6 |
| 21 | 3.3 | Desarrollo Backend | 70d | 2026-09-23 A | 2026-12-29 | 19 | 3% | 68d | 70d |  | finish no earlier than 2026-10-16 | Desarrollador Backend [80%] | 451.2h | 16h | 10,403,765.76 | 368,928 |
| 22 | 3.4 | Desarrollo Frontend | 70d | 2026-09-23 A | 2026-12-29 | 19 | 3% | 68d | 70d |  | finish no earlier than 2026-10-16 | Desarrollador Frontend [90%] | 505.6h | 16h | 9,326,793.98 | 295,152 |
| 23 | 3.5 | Integración Backend + Frontend | 40d | 2026-09-23 A | 2026-11-17 | 19 | 5% | 38d | 0d |  | finish no earlier than 2026-10-22 | Desarrollador Backend [5%]; Desarrollador Frontend [5%] | 62.4h | 32h | 1,294,956 | 664,080 |
| 24 | 3.6 | Implementación de funcionalidades | 40d | 2026-09-23 A | 2026-11-30 | 23 | 78% | 9d | 91d |  | finish no earlier than 2026-10-29 | Desarrollador Backend [5%]; Desarrollador Frontend [5%] | 56.8h | 49.6h | 1,178,742 | 1,029,324 |

| ID | WBS | Task | Duration | Start | Finish | Predecessors | Total slack | Free slack | Constraint | Resources | Work | Cost |
| --- | --- | --- | --- | --- | --- | --- | --- | --- | --- | --- | --- | --- |
| 25 | 4 | **PRUEBAS** | 12d | 2027-02-08 | 2027-02-23 |  |  |  |  | Coordinador del proyecto | 216h | 4,966,800 |
| 26 | 4.1 | Diseño de casos de prueba | 2d | 2027-02-08 | 2027-02-09 | 17 | 22d | 1d | start no earlier than 2027-02-08 | Tester | 16h | 322,816 |
| 27 | 4.2 | Pruebas unitarias | 1d | 2027-02-11 | 2027-02-11 | 26 | 38d |  | start no earlier than 2027-02-11 | Tester | 8h | 161,408 |
| 28 | 4.3 | Pruebas de integración | 2d | 2027-02-12 | 2027-02-15 | 26 | 20d | 0d | start no earlier than 2027-02-12 | Tester | 16h | 322,816 |
| 29 | 4.4 | Pruebas funcionales | 2d | 2027-02-16 | 2027-02-17 | 28 | 20d | 0d | finish no earlier than 2026-11-10 | Tester | 16h | 322,816 |
| 30 | 4.5 | Pruebas de rendimiento | 1d | 2027-02-18 | 2027-02-18 | 29 | 20d | 0d | start no earlier than 2026-11-11 | Tester; Arquitecto 1 | 16h | 313,592 |
| 31 | 4.6 | Corrección de errores | 2d | 2027-02-19 | 2027-02-22 | 30 | 20d | 0d | finish no earlier than 2026-11-13 | Desarrollador Backend; Desarrollador Frontend | 32h | 664,080 |
| 32 | 4.7 | Validación con usuarios | 1d | 2027-02-23 | 2027-02-23 | 31 | 20d |  | start no earlier than 2026-11-16 | Coordinador del proyecto; Tester | 16h | 368,936 |
| 33 | 5 | **DESPLIEGUE** | 10d | 2027-03-24 | 2027-04-06 |  |  |  |  | PROJECT MANAGER | 208h | 5,695,448 |
| 34 | 5.1 | Configuración del servidor | 1d | 2027-03-24 | 2027-03-24 | 32 | 0d |  |  | Arquitecto 1 | 8h | 152,184 |
| 35 | 5.2 | Configuración de base de datos | 1d | 2027-03-25 | 2027-03-25 | 34 | 0d |  | start no earlier than 2026-11-18 | Desarrollador Backend | 8h | 184,464 |
| 36 | 5.3 | Configuración Backend | 1d | 2027-03-26 | 2027-03-26 | 35 | 0d |  | start no earlier than 2026-11-19 | Desarrollador Backend | 8h | 184,464 |
| 37 | 5.4 | Configuración Frontend | 1d | 2027-03-29 | 2027-03-29 | 36 | 0d |  | start no earlier than 2026-11-20 | Desarrollador Frontend | 8h | 147,576 |
| 38 | 5.5 | Integración y publicación | 2d | 2027-03-30 | 2027-03-31 | 37 | 0d |  | finish no earlier than 2026-11-24 | Arquitecto 1; Desarrollador Backend | 32h | 673,296 |
| 39 | 5.6 | Verificación en producción | 1d | 2027-04-01 | 2027-04-01 | 38 | 0d |  | start no earlier than 2026-11-25 | Tester; PROJECT MANAGER | 16h | 438,112 |
| 40 | 5.7 | Ajustes finales | 2d | 2027-04-02 | 2027-04-05 | 39 | 0d |  | finish no earlier than 2026-11-27 | Desarrollador Backend; Desarrollador Frontend | 32h | 664,080 |
| 41 | 5.8 | Entrega del proyecto | 1d | 2027-04-06 | 2027-04-06 | 40 | 0d |  | start no earlier than 2026-11-30 | PROJECT MANAGER; Coordinador del proyecto | 16h | 484,232 |
